# 2019

Schedule from GanttProject, 2019-09-23 to 2020-02-10.
B-rain project
Holidays every year on 01-01, 01-07, 02-23, 03-08, 05-01, 05-09, 06-12, 11-04

## Calendars

- Project calendar: Mon-Fri working; Sat-Sun off.

## Schedule

| ID | WBS | Task | Duration | Start | Finish | Predecessors |
| --- | --- | --- | --- | --- | --- | --- |
| 1 | 1 | Prototype v 0.1 | 60d | 2019-09-26 | 2019-12-19 |  |
| 2 | 2 | **Left leg** | 76d | 2019-09-23 | 2020-01-09 |  |
| 3 | 2.1 | Insole controller | 10d | 2019-09-23 | 2019-10-04 |  |
| 4 | 2.2 | Hip controller | 10d | 2019-10-07 | 2019-10-18 | 3 |
| 5 | 2.3 | **Foot prosthesis** | 20d | 2019-09-23 | 2019-10-18 |  |
| 6 | 2.3.1 | Redesign for human pattern 1 | 5d | 2019-09-23 | 2019-09-27 |  |
| 7 | 2.3.2 | Implementation for humans | 5d | 2019-09-30 | 2019-10-04 | 6 |
| 8 | 2.3.3 | Redesign 2nd | 5d | 2019-10-07 | 2019-10-11 | 7 |
| 9 | 2.3.4 | Reimplementation | 5d | 2019-10-14 | 2019-10-18 | 8 |
| 10 | 2.4 | **Hip prosthesis** | 10d | 2019-10-14 | 2019-10-25 |  |
| 11 | 2.4.1 | Design | 5d | 2019-10-14 | 2019-10-18 | 8 |
| 12 | 2.4.2 | Implementation | 5d | 2019-10-21 | 2019-10-25 | 9, 11 |
| 13 | 2.5 | **Foot stimulator** | 20d | 2019-09-23 | 2019-10-18 |  |
| 14 | 2.5.1 | Design | 10d | 2019-09-23 | 2019-10-04 |  |
| 15 | 2.5.2 | Implementation | 10d | 2019-10-07 | 2019-10-18 | 14 |
| 16 | 2.6 | Hip stimulator | 10d | 2019-10-28 | 2019-11-11 | 10, 13 |
| 17 | 2.7 | Integration | 10d | 2019-11-12 | 2019-11-25 | 16 |
| 18 | 2.8 | **Validation** | 30d | 2019-11-27 | 2020-01-09 | 17 |
| 19 | 2.8.1 | 1st iteration | 5d | 2019-11-27 | 2019-12-03 |  |
| 20 | 2.8.2 | prosthesis tuning | 10d | 2019-12-04 | 2019-12-17 | 19 |
| 21 | 2.8.3 | 2nd iteration | 5d | 2019-12-18 | 2019-12-24 | 20 |
| 22 | 2.8.4 | prosthesis | 5d | 2019-12-25 | 2019-12-31 | 21 |
| 23 | 2.8.5 | 3rd iteration | 5d | 2020-01-02 | 2020-01-09 | 22 |
| 24 | 3 | **Right leg** | 22d | 2020-01-10 | 2020-02-10 | 2 |
| 25 | 3.1 | Balancer Design | 2d | 2020-01-10 | 2020-01-13 |  |
| 26 | 3.2 | Implementation | 5d | 2020-01-14 | 2020-01-20 | 25 |
| 27 | 3.3 | Validation | 15d | 2020-01-21 | 2020-02-10 | 26 |
| 28 | 4 | Marketing research | 10d | 2019-09-26 | 2019-10-09 |  |
| 29 | 5 | Accelerators research | 10d | 2019-09-26 | 2019-10-09 |  |
| 30 | 6 | Invitations | 5d | 2019-09-26 | 2019-10-02 |  |
| 31 | 7 | Visa processing | 60d | 2019-10-03 | 2019-12-26 | 30 |
| 32 | 8 | Business trip plan | 2d | 2019-10-10 | 2019-10-11 | 28, 29 |
